# Разработка программного обеспечения

Schedule from MS Project, 2009-01-01 to 2009-08-11, status date 2003-07-04, costs in р..
«Богданов и партнеры»
Разработан компанией «Богданов и партнеры». Узнайте больше об управлении проектами, позвоните нам +7-495-642-7340 или напишите info@bogdanov-associates.com

## Calendars

- Standard: Mon-Thu 10:30-12:00, 13:00-19:45; Fri 10:30-12:00, 13:00-18:30; Sat-Sun off.

## Schedule

| ID | WBS | Task | Type | Duration | Start | Finish | Predecessors | Baseline start | Baseline finish | Baseline duration | Total slack | Free slack | Cost | Baseline cost |
| --- | --- | --- | --- | --- | --- | --- | --- | --- | --- | --- | --- | --- | --- | --- |
| 1 | 1 | **Разработка ТЗ** |  | 37.81d | 2009-01-01 | 2009-02-23 |  | 2003-05-20 | 2003-07-01 | 29.83d | 0d |  | 100 | 830.2 |
| 2 | 1.1 | Проведение предпроектного обследования |  | 0.54mo | 2009-01-01 | 2009-01-15 |  | 2003-05-20 | 2003-06-03 | 0.54mo | 0d |  |  | 420.2 |
| 3 | 1.2 | Написание ТЗ |  | 26.98d | 2009-01-15 | 2009-02-23 | 2 | 2003-06-03 | 2003-06-10 | 1w | 0d |  | 100 | 100 |
| 4 | 1.3 | Согласование ТЗ |  | 0.37w | 2009-02-16 | 2009-02-18 | 3FS-2% | 2003-06-09 | 2003-06-24 | 2w | 2.55d | 0d |  | 310 |
| 5 | 1.4 | Разработка ТЗ завершена (внутр.) | milestone | 0d | 2009-02-18 | 2009-02-18 | 4 | 2003-06-24 | 2003-06-24 | 0d | 2.55d | 0d |  |  |
| 6 | 1.5 | Разработка ТЗ завершена | milestone | 0d | 2009-02-19 | 2009-02-19 | 5FS+1d | 2003-07-01 | 2003-07-01 | 0d | 2.55d |  |  |  |
| 7 | 2 | **Разработка программы** |  | 10.95d | 2009-02-23 | 2009-03-10 | 1 | 2003-07-01 | 2003-07-15 | 10.95d | 0d |  |  | 709.17 |
| 8 | 2.1 | Программирование пакетных методов |  | 3.95d | 2009-02-23 | 2009-02-27 |  | 2003-07-01 | 2003-07-04 | 3.95d | 2d |  |  | 173 |
| 9 | 2.2 | Программирование интерфейсных методов |  | 1.19w | 2009-02-23 | 2009-03-03 |  | 2003-07-01 | 2003-07-08 | 1.19w | 0d |  |  | 136.17 |
| 10 | 2.3 | Отладка (альфа-тестирование) |  | 1w | 2009-03-03 | 2009-03-10 | 8, 9 | 2003-07-08 | 2003-07-15 | 1w | 0d |  |  | 400 |
| 11 | 2.4 | Программа отгружена на тестирование | milestone | 0d | 2009-03-10 | 2009-03-10 | 10 | 2003-07-15 | 2003-07-15 | 0d | 0d |  |  |  |
| 12 | 3 | **Разработка документации** |  | 26d | 2009-02-23 | 2009-03-31 | 1 | 2003-07-01 | 2003-08-06 | 26d | 27.95d |  |  |  |
| 13 | 3.1 | **Разработка черновика документации** |  | 16d | 2009-02-23 | 2009-03-17 |  | 2003-07-01 | 2003-07-23 | 16d | 27.95d |  |  |  |
| 14 | 3.1.1 | Разработка предварительной версии черновика документации |  | 1w | 2009-02-23 | 2009-03-02 |  | 2003-07-01 | 2003-07-08 | 1w | 27.95d | 0d |  |  |
| 15 | 3.1.2 | Обновление черновика документации по результатам разработки |  | 2w | 2009-03-02 | 2009-03-16 | 14, 7SS+2% | 2003-07-08 | 2003-07-22 | 2w | 27.95d | 0d |  |  |
| 16 | 3.1.3 | Обновление черновика документации по результатам тестирования |  | 1d | 2009-03-16 | 2009-03-17 | 15 | 2003-07-22 | 2003-07-23 | 1d | 27.95d | 0d |  |  |
| 17 | 3.1.4 | Разработка черновика документации завершена | milestone | 0d | 2009-03-17 | 2009-03-17 | 16 | 2003-07-23 | 2003-07-23 | 0d | 27.95d | 0d |  |  |
| 18 | 3.2 | Рецензирование документации |  | 2w | 2009-03-17 | 2009-03-31 | 17 | 2003-07-23 | 2003-08-06 | 2w | 27.95d | 0d |  |  |
| 19 | 3.3 | Документация согласована | milestone | 0d | 2009-03-31 | 2009-03-31 | 18 | 2003-08-06 | 2003-08-06 | 0d | 27.95d |  |  |  |
| 20 | 4 | **Тестирование программы** |  | 43d | 2009-03-10 | 2009-05-08 | 7 | 2003-07-15 | 2003-09-12 | 43d | 0d |  |  |  |
| 21 | 4.1 | Разработка сценария тестирования |  | 1d | 2009-03-10 | 2009-03-11 |  | 2003-07-15 | 2003-07-16 | 1d | 0d |  |  |  |
| 22 | 4.2 | Согласование сценария тестрования |  | 1d | 2009-03-11 | 2009-03-12 | 21 | 2003-07-16 | 2003-07-17 | 1d | 0d |  |  |  |
| 23 | 4.3 | Модульное тестирование |  | 2mo | 2009-03-12 | 2009-05-07 | 22 | 2003-07-17 | 2003-09-11 | 2mo | 0d |  |  |  |
| 24 | 4.4 | Написание отчета о тестировании |  | 1d | 2009-05-07 | 2009-05-08 | 23 | 2003-09-11 | 2003-09-12 | 1d | 0d |  |  |  |
| 25 | 4.5 | Тестирование завершено | milestone | 0d | 2009-05-08 | 2009-05-08 | 24 | 2003-09-12 | 2003-09-12 | 0d | 0d |  |  |  |

| ID | WBS | Task | Type | Duration | Start | Finish | Predecessors | Baseline start | Baseline finish | Baseline duration | Total slack | Deadline |
| --- | --- | --- | --- | --- | --- | --- | --- | --- | --- | --- | --- | --- |
| 26 | 5 | **Внедрение программы** |  | 67d | 2009-05-08 | 2009-08-11 | 20, 12 | 2003-09-12 | 2003-12-16 | 67d | 0d |  |
| 27 | 5.1 | Установка программы |  | 2d | 2009-05-08 | 2009-05-12 |  | 2003-09-12 | 2003-09-16 | 2d | 0d |  |
| 28 | 5.2 | Конфигурирование программы |  | 2w | 2009-05-12 | 2009-05-26 | 27 | 2003-09-16 | 2003-09-30 | 2w | 0d |  |
| 29 | 5.3 | Опытная эксплуатация |  | 3mo | 2009-05-19 | 2009-08-11 | 28FS-5% | 2003-09-23 | 2003-12-16 | 3mo | 0d |  |
| 30 | 5.4 | Программа передана в коммерческую эксплуатацию | milestone | 0d | 2009-08-11 | 2009-08-11 | 29 | 2003-12-16 | 2003-12-16 | 0d | 0d |  |
| 31 | 6 | Проект завершен | milestone | 0d | 2009-08-11 | 2009-08-11 | 30 | 2003-12-16 | 2003-12-16 | 0d | 0.21d | 2009-08-11 |
